# Year 3 Project Plan 7 30

Schedule from MS Project, 2008-07-14 to 2008-09-08, A marks actual dates.
Persistent Systems Pvt. Ltd.

## Calendars

- Standard: Mon-Fri 08:00-12:00, 13:00-17:00; Sat-Sun off. Exceptions (off unless hours are given): 2008-08-15 (Holiday).

## Resources

| Resource |
| --- |
| Chandrakant Talele |
| Lalit Chand |
| Chetan Patil |
| Atul Jawale |
| Hrishikesh Rajpathak |
| Rushikesh Subhedar |
| Deepak Shingan |

## Schedule

| ID | WBS | Task | Duration | Start | Finish | Predecessors | Complete | Remaining | Total slack | Free slack | Constraint | Resources | Work | Actual work |
| --- | --- | --- | --- | --- | --- | --- | --- | --- | --- | --- | --- | --- | --- | --- |
| 1 | 1 | **Milestone 1** | 40d? | 2008-07-14 A | 2008-09-08 |  | 59% | 16.31d? | 0d |  |  |  | 936h | 584h |
| 2 | 1.1 | **caB2B_Y3_020Technology Stack Migration** | 25d? | 2008-07-14 A | 2008-08-18 |  | 90% | 2.5d? | 15d |  |  |  | 128h | 112h |
| 3 | 1.1.1 | **Migrate to Jboss 4.0.5 GA** | 2d | 2008-07-14 A | 2008-07-15 A |  | 100% |  |  |  |  |  | 16h | 16h |
| 4 | 1.1.1.1 | Changes in existing codebase | 1d | 2008-07-14 A | 2008-07-14 A |  | 100% |  |  |  | start no earlier than 2008-07-14 | Lalit Chand | 8h | 8h |
| 5 | 1.1.1.2 | Changes in deployment process | 1d | 2008-07-15 A | 2008-07-15 A | 4 | 100% |  |  |  |  | Lalit Chand | 8h | 8h |
| 6 | 1.1.2 | **Migrate to EJB 3.0** | 13d | 2008-07-16 A | 2008-08-01 A |  | 100% |  |  |  |  |  | 72h | 72h |
| 7 | 1.1.2.1 | Understanding EJB 3.0 | 5d | 2008-07-16 A | 2008-07-22 A | 5 | 100% |  |  |  |  | Lalit Chand | 40h | 40h |
| 8 | 1.1.2.2 | Changes in existing codebase | 3d | 2008-07-23 A | 2008-07-25 A | 7 | 100% |  |  |  |  | Lalit Chand | 24h | 24h |
| 9 | 1.1.2.3 | Changes in deployment process | 1d | 2008-07-28 A | 2008-07-28 A | 8 | 100% |  |  |  |  | Lalit Chand | 8h | 8h |
| 10 | 1.1.2.4 | Testing and verifications | 4d | 2008-07-29 A | 2008-08-01 A | 9 | 100% |  |  |  |  |  |  |  |
| 11 | 1.1.3 | Reverting back EJB 3.0 changes | 3d | 2008-08-04 A | 2008-08-06 A | 6 | 100% |  |  |  |  | Lalit Chand | 24h | 24h |
| 12 | 1.1.4 | Query Module Release UI | 1d? | 2008-08-18 | 2008-08-18 | 82 |  |  | 15d |  |  | Deepak Shingan | 8h |  |
| 13 | 1.1.5 | Query Module Release backend | 1d? | 2008-07-14 | 2008-07-14 |  |  |  | 27d | 17d |  | Chetan Patil | 8h |  |
| 14 | 1.2 | **Session Management of EJB (For user based expr and queries)** | 12d | 2008-08-07 A | 2008-08-25 |  | 60% | 4.8d | 0d |  |  |  | 40h | 24h |
| 15 | 1.2.1 | Understand stateful EJBs | 5d | 2008-08-07 A | 2008-08-25 | 13 | 60% | 2d | 0d |  |  | Lalit Chand | 40h | 24h |
| 16 | 1.3 | **caB2B_Y3_002-User based experiments** | 5d? | 2008-08-26 | 2008-09-01 | 14 |  |  | 0d |  |  |  | 40h |  |
| 17 | 1.3.1 | Requirement | 1d? | 2008-08-26 | 2008-08-26 |  |  |  | 0d |  |  | Lalit Chand | 8h |  |
| 18 | 1.3.2 | Design | 1d? | 2008-08-27 | 2008-08-27 | 17 |  |  | 0d |  |  | Lalit Chand | 8h |  |
| 19 | 1.3.3 | **Implementation** | 3d? | 2008-08-28 | 2008-09-01 |  |  |  | 0d |  |  |  | 24h |  |
| 20 | 1.3.3.1 | Saving experiments on user basis | 1d? | 2008-08-28 | 2008-08-28 | 18 |  |  | 0d |  |  | Lalit Chand | 8h |  |
| 21 | 1.3.3.2 | Changes needed at client-server interface to pass user info | 1d? | 2008-08-29 | 2008-08-29 | 20 |  |  | 0d |  |  | Lalit Chand | 8h |  |
| 22 | 1.3.3.3 | Fetch and display experiments based on user | 1d? | 2008-09-01 | 2008-09-01 | 21 |  |  | 0d |  |  | Lalit Chand | 8h |  |
| 23 | 1.4 | **caB2B_Y3_003-User based saved queries** | 5d? | 2008-09-02 | 2008-09-08 |  |  |  | 0d |  |  |  | 40h |  |
| 24 | 1.4.1 | Requirement | 1d? | 2008-09-02 | 2008-09-02 | 16 |  |  | 0d |  |  | Lalit Chand | 8h |  |
| 25 | 1.4.2 | Design | 1d? | 2008-09-03 | 2008-09-03 | 24 |  |  | 0d |  |  | Lalit Chand | 8h |  |

| ID | WBS | Task | Duration | Start | Finish | Predecessors | Total slack | Constraint | Resources | Work |
| --- | --- | --- | --- | --- | --- | --- | --- | --- | --- | --- |
| 26 | 1.4.3 | **Implementation** | 3d? | 2008-09-04 | 2008-09-08 |  | 0d |  |  | 24h |
| 27 | 1.4.3.1 | Saving queries on user basis | 1d? | 2008-09-04 | 2008-09-04 | 25 | 0d |  | Lalit Chand | 8h |
| 28 | 1.4.3.2 | Changes needed at client-server interface to pass user info | 1d? | 2008-09-05 | 2008-09-05 | 27 | 0d |  | Lalit Chand | 8h |
| 29 | 1.4.3.3 | Fetch and display experiments based on user | 1d? | 2008-09-08 | 2008-09-08 | 28 | 0d |  | Lalit Chand | 8h |
| 30 | 1.5 | **caB2B_Y3_001-Automatic cache update between admin and cab2b server** | 20d? | 2008-07-14 | 2008-08-08 |  | 20d |  |  |  |
| 31 | 1.5.1 | Requirement | 1d? | 2008-07-14 | 2008-07-14 |  | 39d |  |  |  |
| 32 | 1.5.2 | **Investigation** | 1d? | 2008-07-14 | 2008-07-14 |  | 39d |  |  |  |
| 33 | 1.5.2.1 | Investigate Component | 1d? | 2008-07-14 | 2008-07-14 |  | 39d |  |  |  |
| 34 | 1.5.2.2 | Developing Prototype | 1d? | 2008-07-14 | 2008-07-14 |  | 39d |  |  |  |
| 35 | 1.5.2.3 | Design | 1d? | 2008-07-14 | 2008-07-14 |  | 39d |  |  |  |
| 36 | 1.5.3 | **Implementation** | 20d? | 2008-07-14 | 2008-08-08 |  | 20d |  |  |  |
| 37 | 1.5.3.1 | Separating out Implementation Deployment Unit | 1d? | 2008-07-14 | 2008-07-14 |  | 39d |  |  |  |
| 38 | 1.5.3.2 | Changes needed in Deployment Process | 1d? | 2008-08-08 | 2008-08-08 |  | 20d | finish no earlier than 2008-08-08 |  |  |
| 39 | 1.5.4 | **Representing grid user in caB2B** | 1d? | 2008-07-14 | 2008-07-14 |  | 39d |  |  |  |
| 40 | 1.5.4.1 | Investigating APIs needed | 1d? | 2008-07-14 | 2008-07-14 |  | 39d |  |  |  |
| 41 | 1.5.4.2 | Design to store user identity locally | 1d? | 2008-07-14 | 2008-07-14 |  | 39d |  |  |  |
| 42 | 1.5.4.3 | Design review by external parties | 1d? | 2008-07-14 | 2008-07-14 |  | 39d |  |  |  |
| 43 | 1.6 | **Schedular component + notification functionality** | 1d? | 2008-07-14 | 2008-07-14 |  | 39d |  |  | 40h |
| 44 | 1.6.1 | **Schedular** | 1d? | 2008-07-14 | 2008-07-14 |  | 39d |  |  | 16h |
| 45 | 1.6.1.1 | Investigate Component | 1d? | 2008-07-14 | 2008-07-14 |  | 39d |  | Chetan Patil | 8h |
| 46 | 1.6.1.2 | Developing Prototype | 1d? | 2008-07-14 | 2008-07-14 |  | 39d |  | Chetan Patil | 8h |
| 47 | 1.6.2 | **Notification** | 1d? | 2008-07-14 | 2008-07-14 |  | 39d |  |  | 24h |
| 48 | 1.6.2.1 | UI mockup | 1d? | 2008-07-14 | 2008-07-14 |  | 39d |  | Chetan Patil | 8h |
| 49 | 1.6.2.2 | UI implementation | 1d? | 2008-07-14 | 2008-07-14 |  | 39d |  | Chetan Patil | 8h |
| 50 | 1.6.2.3 | Backend Implementation | 1d? | 2008-07-14 | 2008-07-14 |  | 39d |  | Chetan Patil | 8h |

| ID | WBS | Task | Duration | Start | Finish | Predecessors | Complete | Remaining | Total slack | Free slack | Constraint | Resources | Work | Actual work |
| --- | --- | --- | --- | --- | --- | --- | --- | --- | --- | --- | --- | --- | --- | --- |
| 51 | 1.7 | **caB2B_Y3_004-Asynchronous execution of queries** | 1d? | 2008-07-14 | 2008-07-14 |  |  |  | 39d |  |  |  | 40h |  |
| 52 | 1.7.1 | Requirement | 1d? | 2008-07-14 | 2008-07-14 |  |  |  | 39d |  |  | Chetan Patil | 8h |  |
| 53 | 1.7.2 | Design | 1d? | 2008-07-14 | 2008-07-14 |  |  |  | 39d |  |  | Chetan Patil | 8h |  |
| 54 | 1.7.3 | **Implementation** | 1d? | 2008-07-14 | 2008-07-14 |  |  |  | 39d |  |  |  | 24h |  |
| 55 | 1.7.3.1 | Represent schedule | 1d? | 2008-07-14 | 2008-07-14 |  |  |  | 39d |  |  | Chetan Patil | 8h |  |
| 56 | 1.7.3.2 | Storing schedule and firing jobs | 1d? | 2008-07-14 | 2008-07-14 |  |  |  | 39d |  |  | Chetan Patil | 8h |  |
| 57 | 1.7.3.3 | Implementing job for query execution | 1d? | 2008-07-14 | 2008-07-14 |  |  |  | 39d |  |  | Chetan Patil | 8h |  |
| 58 | 1.8 | **caB2B_Y3_005-User to override the URLs** | 11d | 2008-08-12 A | 2008-08-27 |  | 18% | 9d | 8d |  |  |  | 88h | 16h |
| 59 | 1.8.1 | Requirement | 1d | 2008-08-12 A | 2008-08-12 A | 89 | 100% |  |  |  |  | Atul Jawale | 8h | 8h |
| 60 | 1.8.2 | UI mockups | 1d | 2008-08-13 A | 2008-08-13 A | 59 | 100% |  |  |  |  | Atul Jawale | 8h | 8h |
| 61 | 1.8.3 | Design | 1d | 2008-08-14 | 2008-08-14 | 60 |  |  | 8d | 0d |  | Atul Jawale | 8h |  |
| 62 | 1.8.4 | **Implementation** | 8d | 2008-08-18 | 2008-08-27 | 61 |  |  | 8d |  |  |  | 64h |  |
| 63 | 1.8.4.1 | UI implementation | 4d | 2008-08-18 | 2008-08-21 |  |  |  | 8d | 0d |  | Atul Jawale | 32h |  |
| 64 | 1.8.4.2 | Backend integration | 4d | 2008-08-22 | 2008-08-27 | 63 |  |  | 8d |  |  | Atul Jawale | 32h |  |
| 65 | 1.9 | **caB2B_Y3_006-Home page experiments links functional + show all** | 12d | 2008-07-14 A | 2008-07-29 A |  | 100% |  |  |  |  |  | 96h | 96h |
| 66 | 1.9.1 | Requirement | 1d | 2008-07-14 A | 2008-07-14 A |  | 100% |  |  |  | start no earlier than 2008-07-14 | Deepak Shingan | 8h | 8h |
| 67 | 1.9.2 | UI Mockups | 1d | 2008-07-15 A | 2008-07-15 A | 66 | 100% |  |  |  |  | Deepak Shingan | 8h | 8h |
| 68 | 1.9.3 | Design | 1d | 2008-07-16 A | 2008-07-16 A | 67 | 100% |  |  |  |  | Deepak Shingan | 8h | 8h |
| 69 | 1.9.4 | **Implementation** | 9d | 2008-07-17 A | 2008-07-29 A |  | 100% |  |  |  |  |  | 72h | 72h |
| 70 | 1.9.4.1 | Showing recent experiments | 2d | 2008-07-17 A | 2008-07-18 A | 68 | 100% |  |  |  |  | Deepak Shingan | 16h | 16h |
| 71 | 1.9.4.2 | Making links in stack box funtional | 2d | 2008-07-21 A | 2008-07-22 A | 70 | 100% |  |  |  |  | Deepak Shingan | 16h | 16h |
| 72 | 1.9.4.3 | Show All to display all experiments on right side | 3d | 2008-07-23 A | 2008-07-25 A | 71 | 100% |  |  |  |  | Deepak Shingan | 24h | 24h |
| 73 | 1.9.4.4 | Click on any experiment from show all table to open experiment | 2d | 2008-07-28 A | 2008-07-29 A | 72 | 100% |  |  |  |  | Deepak Shingan | 16h | 16h |
| 74 | 1.10 | **caB2B_Y3_007-Home page category links functional + show all** | 12d | 2008-07-30 A | 2008-08-14 A |  | 100% |  |  |  |  |  | 96h | 96h |
| 75 | 1.10.1 | Requirement | 1d | 2008-07-30 A | 2008-07-30 A | 65 | 100% |  |  |  |  | Deepak Shingan | 8h | 8h |
| 76 | 1.10.2 | UI Mockups | 1d | 2008-07-31 A | 2008-07-31 A | 75 | 100% |  |  |  |  | Deepak Shingan | 8h | 8h |
| 77 | 1.10.3 | Design | 1d | 2008-08-01 A | 2008-08-01 A | 76 | 100% |  |  |  |  | Deepak Shingan | 8h | 8h |

| ID | WBS | Task | Duration | Start | Finish | Predecessors | Complete | Remaining | Total slack | Free slack | Constraint | Resources | Work | Actual work |
| --- | --- | --- | --- | --- | --- | --- | --- | --- | --- | --- | --- | --- | --- | --- |
| 78 | 1.10.4 | **Implementation** | 9d | 2008-08-04 A | 2008-08-14 A |  | 100% |  |  |  |  |  | 72h | 72h |
| 79 | 1.10.4.1 | Showing all categories | 2d | 2008-08-04 A | 2008-08-05 A | 77 | 100% |  |  |  |  | Deepak Shingan | 16h | 16h |
| 80 | 1.10.4.2 | Clicking on category in stack box to open add limit page | 2d | 2008-08-06 A | 2008-08-07 A | 79 | 100% |  |  |  |  | Deepak Shingan | 16h | 16h |
| 81 | 1.10.4.3 | Show All to display all categories on right side | 3d | 2008-08-08 A | 2008-08-12 A | 80 | 100% |  |  |  |  | Deepak Shingan | 24h | 24h |
| 82 | 1.10.4.4 | Click on any category from show all table to open it in add limit page | 2d | 2008-08-13 A | 2008-08-14 A | 81 | 100% |  |  |  |  | Deepak Shingan | 16h | 16h |
| 83 | 1.11 | **caB2B_Y3_008-Popular categories** | 19d | 2008-07-28 A | 2008-08-22 |  | 67% | 6.33d | 11d |  |  |  | 144h | 96h |
| 84 | 1.11.1 | Requirement | 8d | 2008-07-28 A | 2008-08-06 A |  | 100% |  |  |  | start no earlier than 2008-07-28 | Hrishikesh Rajpathak | 64h | 64h |
| 85 | 1.11.2 | Design | 5d | 2008-08-07 A | 2008-08-14 | 84 | 80% | 1d | 11d | 0d | finish no earlier than 2008-08-14 | Hrishikesh Rajpathak | 40h | 32h |
| 86 | 1.11.3 | **Implementation** | 5d | 2008-08-18 | 2008-08-22 |  |  |  | 11d |  |  |  | 40h |  |
| 87 | 1.11.3.1 | Calculating popularity | 2d | 2008-08-18 | 2008-08-19 | 85 |  |  | 11d | 0d |  | Hrishikesh Rajpathak | 16h |  |
| 88 | 1.11.3.2 | Storing and using popularity | 3d | 2008-08-20 | 2008-08-22 | 87 |  |  | 11d |  | finish no earlier than 2008-08-08 | Hrishikesh Rajpathak | 24h |  |
| 89 | 1.12 | **caB2B_Y3_009-Fixing the current washU services for index service** | 21d | 2008-07-14 A | 2008-08-11 |  | 76% | 5d | 18d | 0d |  |  | 168h | 128h |
| 90 | 1.12.1 | Learning service, discovery and metadata | 5d | 2008-07-14 | 2008-07-18 |  |  |  | 34d |  |  | Atul Jawale | 40h |  |
| 91 | 1.12.2 | Finding the cause | 5d | 2008-07-21 A | 2008-07-25 A | 90 | 100% |  |  |  |  | Atul Jawale | 40h | 40h |
| 92 | 1.12.3 | Investigating on fixes / solutions | 5d | 2008-07-28 A | 2008-08-01 A | 91 | 100% |  |  |  |  | Atul Jawale | 40h | 40h |
| 93 | 1.12.4 | Fixing Services | 6d | 2008-08-04 A | 2008-08-11 A | 92 | 100% |  |  |  |  | Atul Jawale | 48h | 48h |
| 94 | 1.13 | **Bugs** | 2d | 2008-08-07 A | 2008-08-08 A |  | 100% |  |  |  |  |  | 16h | 16h |
| 95 | 1.13.1 | Bug# 8070 | 2d | 2008-08-07 A | 2008-08-08 A |  | 100% |  |  |  | start no earlier than 2008-08-07 | Chetan Patil | 16h | 16h |
| 96 | 2 | **Milestone 2** | 15d? | 2008-07-14 | 2008-08-01 |  |  |  | 25d |  |  |  |  |  |
| 97 | 2.1 | **caB2B_Y3_010-Support WS enumerations data services** | 1d? | 2008-07-14 | 2008-07-14 |  |  |  | 39d |  |  |  |  |  |
| 98 | 2.1.1 | Requirement | 1d? | 2008-07-14 | 2008-07-14 |  |  |  | 39d |  |  |  |  |  |
| 99 | 2.1.2 | **Investigation** | 1d? | 2008-07-14 | 2008-07-14 |  |  |  | 39d |  |  |  |  |  |
| 100 | 2.1.2.1 | Investigate Component | 1d? | 2008-07-14 | 2008-07-14 |  |  |  | 39d |  |  |  |  |  |
| 101 | 2.1.2.2 | Developing Prototype | 1d? | 2008-07-14 | 2008-07-14 |  |  |  | 39d |  |  |  |  |  |
| 102 | 2.1.3 | Design | 1d? | 2008-07-14 | 2008-07-14 |  |  |  | 39d |  |  |  |  |  |

| ID | WBS | Task | Duration | Start | Finish | Total slack | Constraint |
| --- | --- | --- | --- | --- | --- | --- | --- |
| 103 | 2.1.4 | **Implementation** | 1d? | 2008-07-14 | 2008-07-14 | 39d |  |
| 104 | 2.1.4.1 | Separating out Implementation Deployment Unit | 1d? | 2008-07-14 | 2008-07-14 | 39d |  |
| 105 | 2.1.4.2 | Changes needed in Deployment Process | 1d? | 2008-07-14 | 2008-07-14 | 39d |  |
| 106 | 2.2 | **caB2B_Y3_011-Need to revisit save / not save strategies-yet to clarify** | 1d? | 2008-07-14 | 2008-07-14 | 39d |  |
| 107 | 2.2.1 | Requirement | 1d? | 2008-07-14 | 2008-07-14 | 39d |  |
| 108 | 2.2.2 | **Investigation** | 1d? | 2008-07-14 | 2008-07-14 | 39d |  |
| 109 | 2.2.2.1 | Investigate Component | 1d? | 2008-07-14 | 2008-07-14 | 39d |  |
| 110 | 2.2.2.2 | Developing Prototype | 1d? | 2008-07-14 | 2008-07-14 | 39d |  |
| 111 | 2.2.3 | Design | 1d? | 2008-07-14 | 2008-07-14 | 39d |  |
| 112 | 2.2.4 | **Implementation** | 1d? | 2008-07-14 | 2008-07-14 | 39d |  |
| 113 | 2.2.4.1 | Separating out Implementation Deployment Unit | 1d? | 2008-07-14 | 2008-07-14 | 39d |  |
| 114 | 2.2.4.2 | Changes needed in Deployment Process | 1d? | 2008-07-14 | 2008-07-14 | 39d |  |
| 115 | 2.3 | **caB2B_Y3_012-Asynchronous of save data list** | 15d? | 2008-07-14 | 2008-08-01 | 25d |  |
| 116 | 2.3.1 | Requirement | 1d? | 2008-07-14 | 2008-07-14 | 39d |  |
| 117 | 2.3.2 | **Investigation** | 1d? | 2008-07-14 | 2008-07-14 | 39d |  |
| 118 | 2.3.2.1 | Investigate Component | 1d? | 2008-07-14 | 2008-07-14 | 39d |  |
| 119 | 2.3.2.2 | Developing Prototype | 1d? | 2008-07-14 | 2008-07-14 | 39d |  |
| 120 | 2.3.3 | Design | 1d? | 2008-07-14 | 2008-07-14 | 39d |  |
| 121 | 2.3.4 | **Implementation** | 15d? | 2008-07-14 | 2008-08-01 | 25d |  |
| 122 | 2.3.4.1 | Separating out Implementation Deployment Unit | 1d? | 2008-07-14 | 2008-07-14 | 39d |  |
| 123 | 2.3.4.2 | Changes needed in Deployment Process | 1d? | 2008-08-01 | 2008-08-01 | 25d | finish no earlier than 2008-08-01 |
| 124 | 2.4 | **caB2B_Y3_013-intermodel joins for a group like washU, NCICB , Intermodel joins with pair of service instances** | 1d? | 2008-07-14 | 2008-07-14 | 39d |  |
| 125 | 2.4.1 | Requirement | 1d? | 2008-07-14 | 2008-07-14 | 39d |  |
| 126 | 2.4.2 | **Investigation** | 1d? | 2008-07-14 | 2008-07-14 | 39d |  |
| 127 | 2.4.2.1 | Investigate Component | 1d? | 2008-07-14 | 2008-07-14 | 39d |  |
| 128 | 2.4.2.2 | Developing Prototype | 1d? | 2008-07-14 | 2008-07-14 | 39d |  |
| 129 | 2.4.3 | Design | 1d? | 2008-07-14 | 2008-07-14 | 39d |  |

| ID | WBS | Task | Duration | Start | Finish | Total slack |
| --- | --- | --- | --- | --- | --- | --- |
| 130 | 2.4.4 | **Implementation** | 1d? | 2008-07-14 | 2008-07-14 | 39d |
| 131 | 2.4.4.1 | Separating out Implementation Deployment Unit | 1d? | 2008-07-14 | 2008-07-14 | 39d |
| 132 | 2.4.4.2 | Changes needed in Deployment Process | 1d? | 2008-07-14 | 2008-07-14 | 39d |
| 133 | 2.5 | **caB2B_Y3_014-Experiments with multiple datalists, edit expr to add data list with way to re-query (more likely)** | 1d? | 2008-07-14 | 2008-07-14 | 39d |
| 134 | 2.5.1 | Requirement | 1d? | 2008-07-14 | 2008-07-14 | 39d |
| 135 | 2.5.2 | **Investigation** | 1d? | 2008-07-14 | 2008-07-14 | 39d |
| 136 | 2.5.2.1 | Investigate Component | 1d? | 2008-07-14 | 2008-07-14 | 39d |
| 137 | 2.5.2.2 | Developing Prototype | 1d? | 2008-07-14 | 2008-07-14 | 39d |
| 138 | 2.5.3 | Design | 1d? | 2008-07-14 | 2008-07-14 | 39d |
| 139 | 2.5.4 | **Implementation** | 1d? | 2008-07-14 | 2008-07-14 | 39d |
| 140 | 2.5.4.1 | Separating out Implementation Deployment Unit | 1d? | 2008-07-14 | 2008-07-14 | 39d |
| 141 | 2.5.4.2 | Changes needed in Deployment Process | 1d? | 2008-07-14 | 2008-07-14 | 39d |
| 142 | 2.6 | **caB2B_Y3_015-Support for getting probe data from caArray. For CEL files no need to bring data back to cab2b server, just get the URL and send it to analytical service** | 1d? | 2008-07-14 | 2008-07-14 | 39d |
| 143 | 2.6.1 | Requirement | 1d? | 2008-07-14 | 2008-07-14 | 39d |
| 144 | 2.6.2 | **Investigation** | 1d? | 2008-07-14 | 2008-07-14 | 39d |
| 145 | 2.6.2.1 | Investigate Component | 1d? | 2008-07-14 | 2008-07-14 | 39d |
| 146 | 2.6.2.2 | Developing Prototype | 1d? | 2008-07-14 | 2008-07-14 | 39d |
| 147 | 2.6.3 | Design | 1d? | 2008-07-14 | 2008-07-14 | 39d |
| 148 | 2.6.4 | **Implementation** | 1d? | 2008-07-14 | 2008-07-14 | 39d |
| 149 | 2.6.4.1 | Separating out Implementation Deployment Unit | 1d? | 2008-07-14 | 2008-07-14 | 39d |
| 150 | 2.6.4.2 | Changes needed in Deployment Process | 1d? | 2008-07-14 | 2008-07-14 | 39d |
| 151 | 2.7 | **caB2B_Y3_016-Support basic analytical services (support for ICR services, if needed, do customizations)** | 1d? | 2008-07-14 | 2008-07-14 | 39d |
| 152 | 2.7.1 | Requirement | 1d? | 2008-07-14 | 2008-07-14 | 39d |
| 153 | 2.7.2 | **Investigation** | 1d? | 2008-07-14 | 2008-07-14 | 39d |
| 154 | 2.7.2.1 | Investigate Component | 1d? | 2008-07-14 | 2008-07-14 | 39d |
| 155 | 2.7.2.2 | Developing Prototype | 1d? | 2008-07-14 | 2008-07-14 | 39d |
| 156 | 2.7.3 | Design | 1d? | 2008-07-14 | 2008-07-14 | 39d |

| ID | WBS | Task | Duration | Start | Finish | Total slack |
| --- | --- | --- | --- | --- | --- | --- |
| 157 | 2.7.4 | **Implementation** | 1d? | 2008-07-14 | 2008-07-14 | 39d |
| 158 | 2.7.4.1 | Separating out Implementation Deployment Unit | 1d? | 2008-07-14 | 2008-07-14 | 39d |
| 159 | 2.7.4.2 | Changes needed in Deployment Process | 1d? | 2008-07-14 | 2008-07-14 | 39d |
| 160 | 2.8 | **caB2B_Y3_017-Viewers for supported analytical services** | 1d? | 2008-07-14 | 2008-07-14 | 39d |
| 161 | 2.8.1 | Requirement | 1d? | 2008-07-14 | 2008-07-14 | 39d |
| 162 | 2.8.2 | **Investigation** | 1d? | 2008-07-14 | 2008-07-14 | 39d |
| 163 | 2.8.2.1 | Investigate Component | 1d? | 2008-07-14 | 2008-07-14 | 39d |
| 164 | 2.8.2.2 | Developing Prototype | 1d? | 2008-07-14 | 2008-07-14 | 39d |
| 165 | 2.8.3 | Design | 1d? | 2008-07-14 | 2008-07-14 | 39d |
| 166 | 2.8.4 | **Implementation** | 1d? | 2008-07-14 | 2008-07-14 | 39d |
| 167 | 2.8.4.1 | Separating out Implementation Deployment Unit | 1d? | 2008-07-14 | 2008-07-14 | 39d |
| 168 | 2.8.4.2 | Changes needed in Deployment Process | 1d? | 2008-07-14 | 2008-07-14 | 39d |
| 169 | 2.9 | **caB2B_Y3_018-Returning result of a federated query even if only one of the instances is failed** | 1d? | 2008-07-14 | 2008-07-14 | 39d |
| 170 | 2.9.1 | Requirement | 1d? | 2008-07-14 | 2008-07-14 | 39d |
| 171 | 2.9.2 | **Investigation** | 1d? | 2008-07-14 | 2008-07-14 | 39d |
| 172 | 2.9.2.1 | Investigate Component | 1d? | 2008-07-14 | 2008-07-14 | 39d |
| 173 | 2.9.2.2 | Developing Prototype | 1d? | 2008-07-14 | 2008-07-14 | 39d |
| 174 | 2.9.3 | Design | 1d? | 2008-07-14 | 2008-07-14 | 39d |
| 175 | 2.9.4 | **Implementation** | 1d? | 2008-07-14 | 2008-07-14 | 39d |
| 176 | 2.9.4.1 | Separating out Implementation Deployment Unit | 1d? | 2008-07-14 | 2008-07-14 | 39d |
| 177 | 2.9.4.2 | Changes needed in Deployment Process | 1d? | 2008-07-14 | 2008-07-14 | 39d |
| 178 | 2.10 | **caB2B_Y3_019-Intermodel joins with multiple attributes** | 1d? | 2008-07-14 | 2008-07-14 | 39d |
| 179 | 2.10.1 | Requirement | 1d? | 2008-07-14 | 2008-07-14 | 39d |
| 180 | 2.10.2 | **Investigation** | 1d? | 2008-07-14 | 2008-07-14 | 39d |
| 181 | 2.10.2.1 | Investigate Component | 1d? | 2008-07-14 | 2008-07-14 | 39d |
| 182 | 2.10.2.2 | Developing Prototype | 1d? | 2008-07-14 | 2008-07-14 | 39d |
| 183 | 2.10.3 | Design | 1d? | 2008-07-14 | 2008-07-14 | 39d |

| ID | WBS | Task | Duration | Start | Finish | Total slack |
| --- | --- | --- | --- | --- | --- | --- |
| 184 | 2.10.4 | **Implementation** | 1d? | 2008-07-14 | 2008-07-14 | 39d |
| 185 | 2.10.4.1 | Separating out Implementation Deployment Unit | 1d? | 2008-07-14 | 2008-07-14 | 39d |
| 186 | 2.10.4.2 | Changes needed in Deployment Process | 1d? | 2008-07-14 | 2008-07-14 | 39d |
| 187 | 2.11 | **QA cycle** | 1d? | 2008-07-14 | 2008-07-14 | 39d |
| 188 | 2.11.1 | Writing testcases for new functionalities | 1d? | 2008-07-14 | 2008-07-14 | 39d |
| 189 | 2.11.2 | Build 1 for QA | 1d? | 2008-07-14 | 2008-07-14 | 39d |
| 190 | 2.11.3 | Testing Build 1 | 1d? | 2008-07-14 | 2008-07-14 | 39d |
| 191 | 2.11.4 | Fix bugs reported in Build 1 | 1d? | 2008-07-14 | 2008-07-14 | 39d |
| 192 | 2.11.5 | Demo to washU users | 1d? | 2008-07-14 | 2008-07-14 | 39d |
| 193 | 2.11.6 | Build 2 for QA | 1d? | 2008-07-14 | 2008-07-14 | 39d |
| 194 | 2.11.7 | Testing of Build 2 (by QA + washU users) | 1d? | 2008-07-14 | 2008-07-14 | 39d |
| 195 | 2.11.8 | Regression Testing | 1d? | 2008-07-14 | 2008-07-14 | 39d |
| 196 | 2.11.9 | Fix bugs reported in (Build 2 + regression testing) | 1d? | 2008-07-14 | 2008-07-14 | 39d |
| 197 | 2.12 | **Release Candidate 1** | 1d? | 2008-07-14 | 2008-07-14 | 39d |
| 198 | 2.12.1 | Release to QA + washU users for accepatance | 1d? | 2008-07-14 | 2008-07-14 | 39d |
| 199 | 2.12.2 | Verification of fixed bugs | 1d? | 2008-07-14 | 2008-07-14 | 39d |
| 200 | 2.12.3 | UAT by QA + washU users | 1d? | 2008-07-14 | 2008-07-14 | 39d |
| 201 | 2.12.4 | UAT bug fixing | 1d? | 2008-07-14 | 2008-07-14 | 39d |
| 202 | 2.13 | **Release activities** | 1d? | 2008-07-14 | 2008-07-14 | 39d |
| 203 | 2.13.1 | Updating washU servers | 1d? | 2008-07-14 | 2008-07-14 | 39d |
| 204 | 2.13.2 | Updating G-forge | 1d? | 2008-07-14 | 2008-07-14 | 39d |
| 205 | 2.13.3 | Updating website (cab2b.wustl.edu) | 1d? | 2008-07-14 | 2008-07-14 | 39d |
| 206 | 2.13.4 | Updating caBIG Tools Page | 1d? | 2008-07-14 | 2008-07-14 | 39d |
| 207 | 2.14 | **Documentation** | 1d? | 2008-07-14 | 2008-07-14 | 39d |
| 208 | 2.14.1 | Admin end user manual | 1d? | 2008-07-14 | 2008-07-14 | 39d |
| 209 | 2.14.2 | Admin design document | 1d? | 2008-07-14 | 2008-07-14 | 39d |
| 210 | 2.14.3 | Update design document | 1d? | 2008-07-14 | 2008-07-14 | 39d |
| 211 | 2.14.4 | Update end user manual update | 1d? | 2008-07-14 | 2008-07-14 | 39d |

| ID | WBS | Task | Duration | Start | Finish | Total slack |
| --- | --- | --- | --- | --- | --- | --- |
| 212 | 2.15 | **Documentation Review** | 1d? | 2008-07-14 | 2008-07-14 | 39d |
| 213 | 2.15.1 | Review by NCICB Leads | 1d? | 2008-07-14 | 2008-07-14 | 39d |
| 214 | 2.15.2 | D&T Review | 1d? | 2008-07-14 | 2008-07-14 | 39d |
| 215 | 2.16 | Final Documentation | 1d? | 2008-07-14 | 2008-07-14 | 39d |
